# Harbour Pointe Assisted Living Ctr - Baseline Plan

How a schedule from Primavera P6 changed from version to version. A marks actual dates.

## Version 1 (data date 2010-07-01, saved 2024-12-17, file Harbour Pointe Assisted Living Center Baseline.xer)

Note of the change: rag enhancements and sample XERs

| ID | WBS | Task | Duration | Start | Finish | Predecessors | Total float |
| --- | --- | --- | --- | --- | --- | --- | --- |
| EC1010 |  | Building Pad Delivered by Owner | 0d | 2010-09-01 | 2010-09-01 |  | 845d |
| EC1080 |  | Permits Received - Start Site Work | 1032d | 2010-09-01 | 2014-08-14 | EC1010 FS+1d | 0d |
| EC2430 |  | Substantial Completion - All TCO | 0d | 2014-08-14 | 2014-08-14 | EC1600, EC1200, EC2440, EC1130, EC2180, EC1270, EC2390, EC2420 | 0d |
|  | 1 | **Building 1** |  | 2010-09-01 | 2014-08-14 |  |  |
| EC2440 |  | Complete Building 1 | 0d | 2014-08-14 | 2014-08-14 | EC2240, EC1790, EC1850, EC2360, EC1630, EC1780, EC2290, EC1670, EC1700, EC2270, EC2400, EC2140, EC1910, EC2080, EC2250 FF, EC1990, EC2370, EC1550, EC1950, EC2260 | 0d |
|  | 1 | **Structure** |  | 2010-09-01 | 2011-08-31 |  |  |
| EC1090 |  | Building Pad Including UG Utils | 60d | 2010-09-01 | 2010-11-23 | EC1110 FF, EC1080 | 0d |
| EC1140 |  | First Floor Masonry Structure | 15d | 2010-11-24 | 2010-12-14 | EC1090 | 0d |
| EC1170 |  | Second Floor Slab & Collar Beam | 30d | 2010-12-15 | 2011-01-25 | EC1140 | 0d |
| EC1190 |  | Second Floor Masonry Structure | 15d | 2011-01-26 | 2011-02-15 | EC1170 | 0d |
| EC1210 |  | Third Floor Slab & Collar Beam | 30d | 2011-02-16 | 2011-03-29 | EC1190 | 0d |
| EC1240 |  | Third Floor Masonry Structure | 15d | 2011-03-30 | 2011-04-19 | EC1210 | 0d |
| EC1250 |  | Fourth Floor Slab & Collar Beam | 30d | 2011-04-20 | 2011-05-31 | EC1240 | 0d |
| EC1300 |  | Fourth Floor Masonry Structure | 15d | 2011-06-01 | 2011-06-21 | EC1250 | 0d |
| EC1310 |  | Roof Slab | 30d | 2011-06-22 | 2011-08-02 | EC1300 | 0d |
| EC1340 |  | Stair and Elevator Masonry Structure | 6d | 2011-08-03 | 2011-08-10 | EC1310 | 0d |
| EC1350 |  | Roof Slab/Collar Beam | 15d | 2011-08-11 | 2011-08-31 | EC1340 | 0d |
|  | 2 | **Roof** |  | 2011-09-01 | 2011-12-30 |  |  |
| EC1390 |  | Place Roof Trusses and Sheathing | 30d | 2011-09-01 | 2011-10-12 | EC1350 | 110d |
| EC1400 |  | Place Mechanical Equipment Supports | 30d | 2011-09-01 | 2011-10-12 | EC1350 | 338d |
| EC1530 |  | Built-Up Asphalt Roofing | 42d | 2011-10-13 | 2011-12-09 | EC1400 | 338d |
| EC1540 |  | Felt and Tile Roofing | 57d | 2011-10-13 | 2011-12-30 | EC1390 | 110d |
| EC1780 |  | Roof Complete | 0d | 2011-12-30 | 2011-12-30 | EC1530, EC1010, EC1540 | 497d |
|  | 3 | **Envelope** |  | 2011-08-11 | 2012-07-06 |  |  |
| EC1360 |  | Mobilize Scaffolding | 15d | 2011-08-11 | 2011-08-31 | EC1350 SS | 44d |
| EC1410 |  | Install Exterior Windows and Sliding Glass Doors Floor 1 | 24d | 2011-09-01 | 2011-10-04 | EC1350 | 0d |
| EC1470 |  | Install Exterior Windows and Sliding Glass Doors Floor 2 | 24d | 2011-09-28 | 2011-10-31 | EC1410 FS-5d | 0d |
| EC1490 |  | Install Backing & Cauld Windows Floor1 | 12d | 2011-09-29 | 2011-10-14 | EC1410 FS-4d, EC1360 | 24d |
| EC1500 |  | Install Exterior Windows and Sliding Glass Doors Floor 3 | 21d | 2011-10-25 | 2011-11-22 | EC1470 FS-5d | 0d |
| EC1510 |  | Install Backing & Cauld Windows Floor 2 | 12d | 2011-10-26 | 2011-11-10 | EC1470 FS-4d, EC1490 | 17d |
| EC1520 |  | Install Exterior Windows and Sliding Glass Doors Floor 4 | 27d | 2011-11-16 | 2011-12-22 | EC1500 FS-5d | 0d |
| EC1570 |  | Install Backing & Cauld Windows Floor 3 | 9d | 2011-11-17 | 2011-11-29 | EC1500 FS-4d, EC1510 | 13d |
| EC1650 |  | Install Backing & Cauld Windows Floor 4 | 12d | 2011-12-19 | 2012-01-03 | EC1520 FS-4d, EC1570 | 0d |
| EC1580 |  | Stucco Bands | 12d | 2011-12-21 | 2012-01-05 | EC1650 FS-10d, EC1510 | 0d |
| EC1660 |  | Stucco Grey | 24d | 2012-01-06 | 2012-02-08 | EC1580 | 0d |
| EC1690 |  | Stucco Finish Coat | 30d | 2012-02-09 | 2012-03-21 | EC1660 | 0d |
| EC1840 |  | Caulk | 12d | 2012-03-22 | 2012-04-06 | EC1690 | 0d |
| EC1900 |  | Stucco Band Trim | 15d | 2012-04-09 | 2012-04-27 | EC1840 | 0d |
| EC1980 |  | Paint Exterior | 15d | 2012-05-07 | 2012-05-25 | EC1900 FS+5d | 0d |
| EC1990 |  | Install Railings | 45d | 2012-05-07 | 2012-07-06 | EC1980 SS | 189d |
| EC2110 |  | Demobilize Scaffolding | 15d | 2012-05-28 | 2012-06-15 | EC1980 | 0d |
| EC2140 |  | Shell Complete | 0d | 2012-07-06 | 2012-07-06 | EC2110, EC1990 | 189d |
|  | 4 | **Interior Finishes** |  | 2011-10-13 | 2013-04-29 |  |  |
| EC1550 |  | Unit Finishes Building North - Floor 1 | 246d | 2011-10-13 | 2012-09-20 | EC1530 SS, EC1540 SS | 338d |
| EC1630 |  | Unit Finishes Building South - Floor 1 | 249d | 2011-10-20 | 2012-10-02 | EC1550 SS+5d | 338d |
| EC1670 |  | Unit Finishes Building North - Floor 2 | 249d | 2011-10-27 | 2012-10-09 | EC1630 SS+5d | 412d |
| EC1700 |  | Unit Finishes Building South - Floor 2 | 249d | 2011-11-03 | 2012-10-16 | EC1670 SS+5d | 412d |
| EC1790 |  | Unit Finishes Building North - Floor 3 | 249d | 2011-11-10 | 2012-10-23 | EC1700 SS+5d, EC1820 FF+40d | 412d |
| EC1850 |  | Unit Finishes Building South - Floor 3 | 249d | 2011-11-17 | 2012-10-30 | EC1790 SS+5d | 412d |
| EC1910 |  | Unit Finishes Building North - Floor 4 | 252d | 2011-11-24 | 2012-11-09 | EC1850 SS+5d | 412d |
| EC1950 |  | Unit Finishes Building South - Floor 4 | 252d | 2011-12-01 | 2012-11-16 | EC1910 SS+5d | 412d |
| EC1820 |  | Building 2 Elevators Complete | 87d | 2012-01-02 | 2012-05-01 | EC1440 FF+15d, EC1780, EC1550 SS | 497d |
| EC2240 |  | Tenant Finishes for Clubhouse Areas | 159d | 2012-09-19 | 2013-04-29 | EC1630 FS-10d | 338d |
| EC2370 |  | Final Inspections and Punchlist | 42d | 2013-03-01 | 2013-04-29 | EC2240 FF, EC1700, EC1550, EC1670, EC1790, EC1850, EC1630, EC1910, EC1950 | 338d |
|  | 5 | **Pool & Courtyard** |  | 2012-06-04 | 2013-04-05 |  |  |
| EC2080 |  | Pool & Deck | 177d | 2012-06-04 | 2013-02-05 | EC2110 FS-10d, EC1540 | 0d |
| EC2270 |  | Pergola and Amenities | 63d | 2013-01-09 | 2013-04-05 | EC2080 FS-20d | 0d |
|  | 2 | **Building 2** |  | 2010-09-29 | 2013-07-05 |  |  |
| EC2420 |  | Complete Building 2 | 0d | 2013-07-05 | 2013-07-05 | EC2070, EC2410, EC2150, EC2200, EC2120, EC2030, EC2210, EC2330, EC2170, EC2340 | 289d |
|  | 1 | **Structure** |  | 2010-09-29 | 2011-10-14 |  |  |
| EC1150 |  | Building Slab Incl. UG Utils | 60d | 2010-09-29 | 2010-12-21 | EC1090 SS+20d, EC1080 | 167d |
| EC1220 |  | First Floor Masonry Structure | 15d | 2010-12-22 | 2011-01-11 | EC1150 | 167d |
| EC1230 |  | Second Floor Slab & Collar Beam | 30d | 2011-01-12 | 2011-02-22 | EC1220 | 167d |
| EC1260 |  | Second Floor Masonry Structure | 15d | 2011-02-23 | 2011-03-15 | EC1230 | 167d |
| EC1290 |  | Third Floor Slab & Collar Beam | 30d | 2011-03-16 | 2011-04-26 | EC1260 | 167d |
| EC1320 |  | Third Floor Masonry Structure | 15d | 2011-04-27 | 2011-05-17 | EC1290 | 167d |
| EC1330 |  | Fourth Floor Slab & Collar Beam | 30d | 2011-05-18 | 2011-06-28 | EC1320 | 167d |
| EC1380 |  | Fourth Floor Masonry Structure | 15d | 2011-06-29 | 2011-07-19 | EC1330 | 167d |
| EC1480 |  | Roof Slab | 27d | 2011-07-20 | 2011-08-25 | EC1380 | 167d |
| EC1620 |  | Stair and Elevator Masonry Structure | 6d | 2011-08-26 | 2011-09-02 | EC1480 | 167d |

| ID | WBS | Task | Duration | Start | Finish | Predecessors | Total float | Constraint |
| --- | --- | --- | --- | --- | --- | --- | --- | --- |
| EC1640 |  | Roof Slab/Collar Beam | 30d | 2011-09-05 | 2011-10-14 | EC1620 | 167d |  |
|  | 2 | **Roof** |  | 2011-10-17 | 2012-02-14 |  |  |  |
| EC1710 |  | Place Roof Trusses and Sheathing | 30d | 2011-10-17 | 2011-11-25 | EC1640 | 167d |  |
| EC1720 |  | Place Mechanical Equipment Supports | 30d | 2011-10-17 | 2011-11-25 | EC1640 | 182d |  |
| EC1860 |  | Built-Up Asphalt Roofing | 42d | 2011-11-28 | 2012-01-24 | EC1720 | 182d |  |
| EC1870 |  | Felt and Tile Roofing | 57d | 2011-11-28 | 2012-02-14 | EC1710 | 167d |  |
| EC2020 |  | Roof Complete | 0d | 2012-02-14 | 2012-02-14 | EC1150 SF, EC1870, EC1860 | 167d |  |
|  | 3 | **Envelope** |  | 2011-10-17 | 2012-12-07 |  |  |  |
| EC1730 |  | Install Exterior Windows and Sliding Glass Doors Floor 1 | 30d | 2011-10-17 | 2011-11-25 | EC1640 | 325d |  |
| EC1740 |  | Mobilize Scaffolding | 15d | 2011-10-17 | 2011-11-04 | EC1640 | 363d |  |
| EC1800 |  | Install Exterior Windows and Sliding Glass Doors Floor 2 | 27d | 2011-11-21 | 2011-12-27 | EC1730 FS-5d | 325d |  |
| EC1830 |  | Install Backing & Cauld Windows Floor1 | 15d | 2011-11-22 | 2011-12-12 | EC1740, EC1730 FS-4d | 352d |  |
| EC1880 |  | Install Exterior Windows and Sliding Glass Doors Floor 3 | 27d | 2011-12-21 | 2012-01-26 | EC1800 FS-5d | 325d |  |
| EC1890 |  | Install Backing & Cauld Windows Floor 2 | 12d | 2011-12-22 | 2012-01-06 | EC1800 FS-4d, EC1830 | 345d |  |
| EC1920 |  | Install Exterior Windows and Sliding Glass Doors Floor 4 | 30d | 2012-01-20 | 2012-03-01 | EC1880 FS-5d | 325d |  |
| EC1930 |  | Install Backing & Cauld Windows Floor 3 | 15d | 2012-01-23 | 2012-02-10 | EC1890, EC1880 FS-4d | 335d |  |
| EC1960 |  | Install Backing & Cauld Windows Floor 4 | 15d | 2012-02-27 | 2012-03-16 | EC1930, EC1920 FS-4d | 325d |  |
| EC1940 |  | Stucco Bands | 15d | 2012-03-05 | 2012-03-23 | EC1890, EC1960 FS-10d | 325d |  |
| EC1970 |  | Stucco Grey | 30d | 2012-03-26 | 2012-05-04 | EC1940 | 325d |  |
| EC2050 |  | Stucco Finish Coat | 30d | 2012-05-07 | 2012-06-15 | EC1970 | 325d |  |
| EC2130 |  | Caulk | 15d | 2012-06-18 | 2012-07-06 | EC2050 | 325d |  |
| EC2160 |  | Stucco Band Trim | 30d | 2012-07-09 | 2012-08-17 | EC2130 | 325d |  |
| EC2220 |  | Paint Exterior | 60d | 2012-08-27 | 2012-11-16 | EC2160 FS+5d | 325d |  |
| EC2230 |  | Install Railings | 45d | 2012-08-27 | 2012-10-26 | EC2220 SS | 370d |  |
| EC2300 |  | Demobilize Scaffolding | 15d | 2012-11-19 | 2012-12-07 | EC2220 | 325d |  |
| EC2320 |  | Shell Complete | 0d | 2012-12-07 | 2012-12-07 | EC2300, EC2230 | 340d |  |
|  | 4 | **Interior Finishes** |  | 2012-02-08 | 2013-07-05 |  |  |  |
| EC2000 |  | Unit Finishes Building North - Floor 1 | 252d | 2012-02-08 | 2013-01-24 | EC1860, EC1870 FS-5d | 289d |  |
| EC2030 |  | Unit Finishes Building South - Floor 1 | 252d | 2012-02-15 | 2013-01-31 | EC2000 SS+5d | 289d |  |
| EC2040 |  | Building 1 Elevators Complete | 87d | 2012-02-15 | 2012-06-14 | EC2000 SS, EC1750 FF+15d, EC2020 | 423d |  |
| EC2070 |  | Unit Finishes Building North - Floor 2 | 246d | 2012-02-22 | 2013-01-30 | EC2030 SS+5d | 289d |  |
| EC2120 |  | Unit Finishes Building South - Floor 2 | 246d | 2012-02-29 | 2013-02-06 | EC2070 SS+5d | 289d |  |
| EC2150 |  | Unit Finishes Building North - Floor 3 | 246d | 2012-03-07 | 2013-02-13 | EC2120 SS+5d, EC2040 FF+40d | 289d |  |
| EC2170 |  | Unit Finishes Building South - Floor 3 | 246d | 2012-03-14 | 2013-02-20 | EC2150 SS+5d | 289d |  |
| EC2200 |  | Unit Finishes Building North - Floor 4 | 243d | 2012-03-21 | 2013-02-22 | EC2170 SS+5d | 289d |  |
| EC2210 |  | Unit Finishes Building South - Floor 4 | 243d | 2012-03-28 | 2013-03-01 | EC2200 SS+5d | 289d |  |
| EC2410 |  | Final Inspections and Punchlist | 90d | 2013-03-04 | 2013-07-05 | EC2030, EC2150, EC2210, EC2000, EC2070, EC2120, EC2170, EC2200 | 289d |  |
|  | 5 | **Courtyard** |  | 2012-12-10 | 2013-05-16 |  |  |  |
| EC2330 |  | Courtyard Walks and Amenities | 114d | 2012-12-10 | 2013-05-16 | EC2300 | 325d |  |
|  | 5 | **Garage 1** |  | 2011-06-08 | 2013-04-12 |  |  |  |
| EC1420 |  | Start Garage | 5d | 2011-06-08 | 2011-06-08 |  | 177d | as late as possible |
| EC1430 |  | Shop Drawings, Review & Approval | 90d | 2011-06-15 | 2011-10-18 | EC1420 | 167d | as late as possible |
| EC1810 |  | Fab & Delivery | 90d | 2011-10-19 | 2012-02-21 | EC1430 | 167d | as late as possible |
| EC2090 |  | Erect Precast Structure | 120d | 2012-02-22 | 2012-08-07 | EC2020 FS+5d, EC1810 | 167d |  |
| EC2280 |  | Fire Protection and Lighting | 90d | 2012-08-08 | 2012-12-11 | EC2090 | 349d |  |
| EC2310 |  | Finishes, Barrier Cables & Striping | 90d | 2012-11-14 | 2013-03-19 | EC2280 FS-20d | 349d |  |
| EC2380 |  | Punchlist Garage | 18d | 2013-03-20 | 2013-04-12 | EC2310 | 349d |  |
| EC2390 |  | Complete Garage 1 | 0d | 2013-04-12 | 2013-04-12 | EC2400 | 349d |  |
| EC2400 |  | Complete Garage | 0d | 2013-04-12 | 2013-04-12 | EC2310, EC2380 | 349d |  |
|  | 6 | **Garage 2** |  | 2010-09-01 | 2012-09-18 |  |  |  |
| EC1020 |  | Start Garage | 0d | 2010-09-01 | 2010-09-01 |  | 497d | as late as possible |
| EC1030 |  | Shop Drawings, Review and Approval | 90d | 2010-09-01 | 2011-01-04 | EC1020 | 497d | as late as possible |
| EC1180 |  | Fab & Delivery | 90d | 2011-01-05 | 2011-05-10 | EC1030 | 497d | as late as possible |
| EC1280 |  | Erect Precast Structure | 120d | 2011-05-11 | 2011-10-25 | EC1180 | 497d |  |
| EC1590 |  | Fire Protection and Lighting | 90d | 2011-10-26 | 2012-02-28 | EC1280 | 497d |  |
| EC1680 |  | Finishes and Striping | 105d | 2012-02-01 | 2012-06-26 | EC1590 FS-20d | 497d |  |
| EC2060 |  | Punch List Garage | 60d | 2012-06-27 | 2012-09-18 | EC1680 | 497d |  |
| EC2180 |  | Complete Garage 2 | 0d | 2012-09-18 | 2012-09-18 | EC2190 | 497d |  |
| EC2190 |  | Complete Garage | 0d | 2012-09-18 | 2012-09-18 | EC1680, EC2060 | 497d |  |
|  | 7 | **Roads, Utilities & Pavers** |  | 2010-09-01 | 2013-04-25 |  |  |  |
| EC1000 |  | Curbing | 90d | 2010-09-01 | 2011-01-04 |  | 794d |  |
| EC1040 |  | Electric to Building 4 Power Vault | 90d | 2010-09-01 | 2011-01-04 |  | 942d |  |
| EC1050 |  | Electric to Building 3 Power Vault | 87d | 2010-09-01 | 2010-12-30 |  | 945d |  |
| EC1100 |  | Storm Drainage Site Work | 90d | 2010-09-01 | 2011-01-04 | EC1080 | 45d |  |
| EC1110 |  | Site Electrical Work & Temp Power | 15d | 2010-09-01 | 2010-09-21 | EC1100 SS | 45d |  |
| EC1130 |  | Walkways | 84d | 2010-09-15 | 2011-01-10 | EC1000 SS+10d | 794d |  |
| EC1200 |  | Roadway Pavers | 84d | 2011-01-11 | 2011-05-06 | EC1130 | 794d |  |
| EC1270 |  | Finish Paving, Striping and Signs | 60d | 2011-05-09 | 2011-07-29 | EC1000, EC1200, EC1130 | 794d |  |
| EC1440 |  | Electric to Building 2 Power Vault | 114d | 2011-09-01 | 2012-02-07 | EC1100, EC1350 | 542d |  |
| EC1750 |  | Electric to Building 1 Power Vault | 87d | 2011-10-17 | 2012-02-14 | EC1640 | 495d |  |

| ID | WBS | Task | Duration | Start | Finish | Predecessors | Total float |
| --- | --- | --- | --- | --- | --- | --- | --- |
| EC1610 |  | Curbs & Paving | 72d | 2011-10-26 | 2012-02-02 | EC1280 | 660d |
| EC2250 |  | Fountain/Water Feature | 144d | 2012-08-02 | 2013-02-19 | EC2090 FS-4d | 387d |
| EC2260 |  | Entry Feature/Sign Wall | 129d | 2012-08-08 | 2013-02-04 | EC2140, EC2090 | 398d |
| EC2290 |  | Curbs & Paving | 90d | 2012-08-08 | 2012-12-11 | EC2140, EC2090 | 422d |
| EC2340 |  | Curbs & Paving | 99d | 2012-12-10 | 2013-04-25 | EC2320 | 340d |
|  | 8 | **Landscape & Irrigation** |  | 2011-04-13 | 2014-08-14 |  |  |
| EC1600 |  | Site Cleanup | 60d | 2011-04-13 | 2011-07-05 | EC1130 FS+5d, EC1000 SS+40d, EC1000 FS+70d | 812d |
| EC2360 |  | Landscape & Irrigation | 360d | 2013-03-29 | 2014-08-14 | EC2140, EC2290 FF+15d, EC2270 FS-6d, EC2090 | 0d |

## Version 2 (data date 2011-05-01, saved 2024-12-17, file Harbour Pointe Assisted Living Center.xer)

Note of the change: rag enhancements and sample XERs

Last finish 2014-08-14 → 2014-09-24 (+41d). Complete tasks 0 → 18.

Removed: EC1080 Permits Received - Start Site Work

Changed:

| ID | Task | Start | Finish | Complete | Total float | Predecessors | Other |
| --- | --- | --- | --- | --- | --- | --- | --- |
| EC1010 | Building Pad Delivered by Owner | 2010-09-01 A | 2010-09-01 A | 0% → 100% | 845d → none |  |  |
| EC2430 | Substantial Completion - All TCO | 2014-08-14 → 2014-09-24 (+41d) | 2014-08-14 → 2014-09-24 (+41d) |  |  |  |  |
| 1 | **Building 1** |  | 2014-08-14 → 2014-09-24 (+41d) |  |  |  |  |
| EC2440 | Complete Building 1 | 2014-08-14 → 2014-09-24 (+41d) | 2014-08-14 → 2014-09-24 (+41d) |  |  |  |  |
| 1 | **Structure** |  | 2011-08-31 → 2011-09-21 (+21d) |  |  |  |  |
| EC1090 | Building Pad Including UG Utils | 2010-09-01 A | 2010-11-23 A | 0% → 100% | 0d → none | EC1110 FF, Permits Received - Start Site Work → EC1110 FF |  |
| EC1140 | First Floor Masonry Structure | 2010-11-24 A | 2010-12-14 → 2010-12-13 A (-1d) | 0% → 100% | 0d → none |  |  |
| EC1170 | Second Floor Slab & Collar Beam | 2010-12-15 A | 2011-01-25 → 2011-01-31 A (+6d) | 0% → 100% | 0d → none |  |  |
| EC1190 | Second Floor Masonry Structure | 2011-01-26 A | 2011-02-15 → 2011-02-22 A (+7d) | 0% → 100% | 0d → none |  |  |
| EC1210 | Third Floor Slab & Collar Beam | 2011-02-16 → 2011-02-23 A (+7d) | 2011-03-29 → 2011-04-07 A (+9d) | 0% → 100% | 0d → none |  |  |
| EC1240 | Third Floor Masonry Structure | 2011-03-30 → 2011-04-12 A (+13d) | 2011-04-19 → 2011-05-05 (+16d) | 0% → 90% |  |  |  |
| EC1250 | Fourth Floor Slab & Collar Beam | 2011-04-20 → 2011-05-05 (+15d) | 2011-05-31 → 2011-06-17 (+17d) |  |  |  |  |
| EC1300 | Fourth Floor Masonry Structure | 2011-06-01 → 2011-06-17 (+16d) | 2011-06-21 → 2011-07-11 (+20d) |  |  |  |  |
| EC1310 | Roof Slab | 2011-06-22 → 2011-07-11 (+19d) | 2011-08-02 → 2011-08-22 (+20d) |  |  |  |  |
| EC1340 | Stair and Elevator Masonry Structure | 2011-08-03 → 2011-08-22 (+19d) | 2011-08-10 → 2011-08-30 (+20d) |  |  |  |  |
| EC1350 | Roof Slab/Collar Beam | 2011-08-11 → 2011-08-30 (+19d) | 2011-08-31 → 2011-09-21 (+21d) |  |  |  |  |
| 2 | **Roof** | 2011-09-01 → 2011-09-21 (+20d) | 2011-12-30 → 2012-01-25 (+26d) |  |  |  |  |
| EC1390 | Place Roof Trusses and Sheathing | 2011-09-01 → 2011-09-21 (+20d) | 2011-10-12 → 2011-11-02 (+21d) |  |  |  |  |
| EC1400 | Place Mechanical Equipment Supports | 2011-09-01 → 2011-09-21 (+20d) | 2011-10-12 → 2011-11-02 (+21d) |  |  |  |  |
| EC1530 | Built-Up Asphalt Roofing | 2011-10-13 → 2011-11-02 (+20d) | 2011-12-09 → 2012-01-04 (+26d) |  |  |  |  |
| EC1540 | Felt and Tile Roofing | 2011-10-13 → 2011-11-02 (+20d) | 2011-12-30 → 2012-01-25 (+26d) |  |  |  |  |
| EC1780 | Roof Complete | 2011-12-30 → 2012-01-25 (+26d) | 2011-12-30 → 2012-01-25 (+26d) |  |  |  |  |
| 3 | **Envelope** | 2011-08-11 → 2011-08-30 (+19d) | 2012-07-06 → 2012-08-03 (+28d) |  |  |  |  |
| EC1360 | Mobilize Scaffolding | 2011-08-11 → 2011-08-30 (+19d) | 2011-08-31 → 2011-09-21 (+21d) |  |  |  |  |
| EC1410 | Install Exterior Windows and Sliding Glass Doors Floor 1 | 2011-09-01 → 2011-09-21 (+20d) | 2011-10-04 → 2011-10-25 (+21d) |  |  |  |  |
| EC1470 | Install Exterior Windows and Sliding Glass Doors Floor 2 | 2011-09-28 → 2011-10-18 (+20d) | 2011-10-31 → 2011-11-21 (+21d) |  |  |  |  |
| EC1490 | Install Backing & Cauld Windows Floor1 | 2011-09-29 → 2011-10-19 (+20d) | 2011-10-14 → 2011-11-04 (+21d) |  |  |  |  |
| EC1500 | Install Exterior Windows and Sliding Glass Doors Floor 3 | 2011-10-25 → 2011-11-14 (+20d) | 2011-11-22 → 2011-12-14 (+22d) |  |  |  |  |
| EC1510 | Install Backing & Cauld Windows Floor 2 | 2011-10-26 → 2011-11-15 (+20d) | 2011-11-10 → 2011-12-02 (+22d) |  |  |  |  |
| EC1520 | Install Exterior Windows and Sliding Glass Doors Floor 4 | 2011-11-16 → 2011-12-07 (+21d) | 2011-12-22 → 2012-01-17 (+26d) |  |  |  |  |
| EC1570 | Install Backing & Cauld Windows Floor 3 | 2011-11-17 → 2011-12-08 (+21d) | 2011-11-29 → 2011-12-21 (+22d) |  |  |  |  |
| EC1650 | Install Backing & Cauld Windows Floor 4 | 2011-12-19 → 2012-01-11 (+23d) | 2012-01-03 → 2012-01-27 (+24d) |  |  |  |  |
| EC1580 | Stucco Bands | 2011-12-21 → 2012-01-13 (+23d) | 2012-01-05 → 2012-01-31 (+26d) |  |  |  |  |
| EC1660 | Stucco Grey | 2012-01-06 → 2012-01-31 (+25d) | 2012-02-08 → 2012-03-05 (+26d) |  |  |  |  |
| EC1690 | Stucco Finish Coat | 2012-02-09 → 2012-03-05 (+25d) | 2012-03-21 → 2012-04-16 (+26d) |  |  |  |  |
| EC1840 | Caulk | 2012-03-22 → 2012-04-16 (+25d) | 2012-04-06 → 2012-05-02 (+26d) |  |  |  |  |
| EC1900 | Stucco Band Trim | 2012-04-09 → 2012-05-02 (+23d) | 2012-04-27 → 2012-05-23 (+26d) |  |  |  |  |
| EC1980 | Paint Exterior | 2012-05-07 → 2012-05-31 (+24d) | 2012-05-25 → 2012-06-21 (+27d) |  |  |  |  |
| EC1990 | Install Railings | 2012-05-07 → 2012-05-31 (+24d) | 2012-07-06 → 2012-08-03 (+28d) |  |  |  |  |
| EC2110 | Demobilize Scaffolding | 2012-05-28 → 2012-06-21 (+24d) | 2012-06-15 → 2012-07-13 (+28d) |  |  |  |  |
| EC2140 | Shell Complete | 2012-07-06 → 2012-08-03 (+28d) | 2012-07-06 → 2012-08-03 (+28d) |  |  |  |  |
| 4 | **Interior Finishes** | 2011-10-13 → 2011-11-02 (+20d) | 2013-04-29 → 2013-06-03 (+35d) |  |  |  |  |
| EC1550 | Unit Finishes Building North - Floor 1 | 2011-10-13 → 2011-11-02 (+20d) | 2012-09-20 → 2012-10-19 (+29d) |  |  |  | resources Plumber [109.09 h]; Electrician [109.09 h]; HVAC [109.09 h]; FF&E Specialties [109.09 h]; Painter [36 h]; Drywall Subcontractor [109.09 h]; Finishes & Fit-out Subcontractor [109.09 h]; Rough Carpenter [109.09 h]; Finish Carpenter [109.09 h]; Millwork Subcontractor [109.09 h]; Floor and Carpet Layer [109.09 h] → Finishes & Fit-out Subcontractor [109.09 h]; Rough Carpenter [109.09 h]; Finish Carpenter [109.09 h]; Millwork Subcontractor [109.09 h]; Floor and Carpet Layer [109.09 h]; Plumber [109.09 h]; Electrician [109.09 h]; HVAC [109.09 h]; FF&E Specialties [109.09 h]; Painter [36 h]; Drywall Subcontractor [109.09 h] |
| EC1630 | Unit Finishes Building South - Floor 1 | 2011-10-20 → 2011-11-09 (+20d) | 2012-10-02 → 2012-10-31 (+29d) |  |  |  |  |
| EC1670 | Unit Finishes Building North - Floor 2 | 2011-10-27 → 2011-11-16 (+20d) | 2012-10-09 → 2012-11-07 (+29d) |  |  |  |  |
| EC1700 | Unit Finishes Building South - Floor 2 | 2011-11-03 → 2011-11-23 (+20d) | 2012-10-16 → 2012-11-14 (+29d) |  |  |  |  |
| EC1790 | Unit Finishes Building North - Floor 3 | 2011-11-10 → 2011-12-01 (+21d) | 2012-10-23 → 2012-11-21 (+29d) |  |  |  |  |
| EC1850 | Unit Finishes Building South - Floor 3 | 2011-11-17 → 2011-12-08 (+21d) | 2012-10-30 → 2012-11-29 (+30d) |  |  |  |  |
| EC1910 | Unit Finishes Building North - Floor 4 | 2011-11-24 → 2011-12-15 (+21d) | 2012-11-09 → 2012-12-11 (+32d) |  |  |  |  |
| EC1950 | Unit Finishes Building South - Floor 4 | 2011-12-01 → 2011-12-22 (+21d) | 2012-11-16 → 2012-12-18 (+32d) |  |  |  |  |
| EC1820 | Building 2 Elevators Complete | 2012-01-02 → 2012-01-25 (+23d) | 2012-05-01 → 2012-05-25 (+24d) |  |  |  |  |
| EC2240 | Tenant Finishes for Clubhouse Areas | 2012-09-19 → 2012-10-17 (+28d) | 2013-04-29 → 2013-06-03 (+35d) |  |  |  |  |
| EC2370 | Final Inspections and Punchlist | 2013-03-01 → 2013-04-03 (+33d) | 2013-04-29 → 2013-06-03 (+35d) |  |  |  |  |
| 5 | **Pool & Courtyard** | 2012-06-04 → 2012-06-28 (+24d) | 2013-04-05 → 2013-05-09 (+34d) |  |  |  |  |
| EC2080 | Pool & Deck | 2012-06-04 → 2012-06-28 (+24d) | 2013-02-05 → 2013-03-11 (+34d) |  |  |  |  |
| EC2270 | Pergola and Amenities | 2013-01-09 → 2013-02-11 (+33d) | 2013-04-05 → 2013-05-09 (+34d) |  |  |  |  |
| 2 | **Building 2** |  | 2013-07-05 → 2013-07-31 (+26d) |  |  |  |  |
| EC2420 | Complete Building 2 | 2013-07-05 → 2013-07-31 (+26d) | 2013-07-05 → 2013-07-31 (+26d) |  | 289d → 296.36d |  |  |
| 1 | **Structure** |  | 2011-10-14 → 2011-10-25 (+11d) |  |  |  |  |
| EC1150 | Building Slab Incl. UG Utils | 2010-09-29 A | 2010-12-21 → 2010-12-27 A (+6d) | 0% → 100% | 167d → none | EC1090 SS+20d, Permits Received - Start Site Work → EC1090 SS+20d |  |
| EC1220 | First Floor Masonry Structure | 2010-12-22 A | 2011-01-11 → 2011-01-18 A (+7d) | 0% → 100% | 167d → none |  |  |
| EC1230 | Second Floor Slab & Collar Beam | 2011-01-12 A | 2011-02-22 → 2011-02-25 A (+3d) | 0% → 100% | 167d → none |  |  |
| EC1260 | Second Floor Masonry Structure | 2011-02-23 A | 2011-03-15 → 2011-03-22 A (+7d) | 0% → 100% | 167d → none |  |  |
| EC1290 | Third Floor Slab & Collar Beam | 2011-03-16 → 2011-03-22 A (+6d) | 2011-04-26 → 2011-05-02 (+6d) | 0% → 92% | 167d → 174.36d |  |  |
| EC1320 | Third Floor Masonry Structure | 2011-04-27 → 2011-05-02 (+5d) | 2011-05-17 → 2011-05-23 (+6d) |  | 167d → 174.36d |  |  |
| EC1330 | Fourth Floor Slab & Collar Beam | 2011-05-18 → 2011-05-23 (+5d) | 2011-06-28 → 2011-07-06 (+8d) |  | 167d → 174.36d |  |  |
| EC1380 | Fourth Floor Masonry Structure | 2011-06-29 → 2011-07-06 (+7d) | 2011-07-19 → 2011-07-27 (+8d) |  | 167d → 174.36d |  |  |
| EC1480 | Roof Slab | 2011-07-20 → 2011-07-27 (+7d) | 2011-08-25 → 2011-09-02 (+8d) |  | 167d → 174.36d |  |  |
| EC1620 | Stair and Elevator Masonry Structure | 2011-08-26 → 2011-09-02 (+7d) | 2011-09-02 → 2011-09-13 (+11d) |  | 167d → 174.36d |  |  |
| EC1640 | Roof Slab/Collar Beam | 2011-09-05 → 2011-09-13 (+8d) | 2011-10-14 → 2011-10-25 (+11d) |  | 167d → 174.36d |  |  |

| ID | Task | Start | Finish | Duration | Complete | Total float | Predecessors |
| --- | --- | --- | --- | --- | --- | --- | --- |
| 2 | **Roof** | 2011-10-17 → 2011-10-25 (+8d) | 2012-02-14 → 2012-02-28 (+14d) |  |  |  |  |
| EC1710 | Place Roof Trusses and Sheathing | 2011-10-17 → 2011-10-25 (+8d) | 2011-11-25 → 2011-12-07 (+12d) |  |  | 167d → 174.36d |  |
| EC1720 | Place Mechanical Equipment Supports | 2011-10-17 → 2011-10-25 (+8d) | 2011-11-25 → 2011-12-07 (+12d) |  |  | 182d → 189.36d |  |
| EC1860 | Built-Up Asphalt Roofing | 2011-11-28 → 2011-12-07 (+9d) | 2012-01-24 → 2012-02-07 (+14d) |  |  | 182d → 189.36d |  |
| EC1870 | Felt and Tile Roofing | 2011-11-28 → 2011-12-07 (+9d) | 2012-02-14 → 2012-02-28 (+14d) |  |  | 167d → 174.36d |  |
| EC2020 | Roof Complete | 2012-02-14 → 2012-02-28 (+14d) | 2012-02-14 → 2012-02-28 (+14d) |  |  | 167d → 174.36d |  |
| 3 | **Envelope** | 2011-10-17 → 2011-10-25 (+8d) | 2012-12-07 → 2012-12-28 (+21d) |  |  |  |  |
| EC1730 | Install Exterior Windows and Sliding Glass Doors Floor 1 | 2011-10-17 → 2011-10-25 (+8d) | 2011-11-25 → 2011-12-07 (+12d) |  |  | 325d → 332.36d |  |
| EC1740 | Mobilize Scaffolding | 2011-10-17 → 2011-10-25 (+8d) | 2011-11-04 → 2011-11-15 (+11d) |  |  | 363d → 370.36d |  |
| EC1800 | Install Exterior Windows and Sliding Glass Doors Floor 2 | 2011-11-21 → 2011-11-30 (+9d) | 2011-12-27 → 2012-01-10 (+14d) |  |  | 325d → 332.36d |  |
| EC1830 | Install Backing & Cauld Windows Floor1 | 2011-11-22 → 2011-12-01 (+9d) | 2011-12-12 → 2011-12-22 (+10d) |  |  | 352d → 359.36d |  |
| EC1880 | Install Exterior Windows and Sliding Glass Doors Floor 3 | 2011-12-21 → 2012-01-03 (+13d) | 2012-01-26 → 2012-02-09 (+14d) |  |  | 325d → 332.36d |  |
| EC1890 | Install Backing & Cauld Windows Floor 2 | 2011-12-22 → 2012-01-04 (+13d) | 2012-01-06 → 2012-01-20 (+14d) |  |  | 345d → 352.36d |  |
| EC1920 | Install Exterior Windows and Sliding Glass Doors Floor 4 | 2012-01-20 → 2012-02-02 (+13d) | 2012-03-01 → 2012-03-15 (+14d) |  |  | 325d → 332.36d |  |
| EC1930 | Install Backing & Cauld Windows Floor 3 | 2012-01-23 → 2012-02-03 (+11d) | 2012-02-10 → 2012-02-24 (+14d) |  |  | 335d → 342.36d |  |
| EC1960 | Install Backing & Cauld Windows Floor 4 | 2012-02-27 → 2012-03-09 (+11d) | 2012-03-16 → 2012-03-30 (+14d) |  |  | 325d → 332.36d |  |
| EC1940 | Stucco Bands | 2012-03-05 → 2012-03-16 (+11d) | 2012-03-23 → 2012-04-06 (+14d) |  |  | 325d → 332.36d |  |
| EC1970 | Stucco Grey | 2012-03-26 → 2012-04-06 (+11d) | 2012-05-04 → 2012-05-18 (+14d) |  |  | 325d → 332.36d |  |
| EC2050 | Stucco Finish Coat | 2012-05-07 → 2012-05-18 (+11d) | 2012-06-15 → 2012-07-02 (+17d) |  |  | 325d → 332.36d |  |
| EC2130 | Caulk | 2012-06-18 → 2012-07-02 (+14d) | 2012-07-06 → 2012-07-24 (+18d) |  |  | 325d → 332.36d |  |
| EC2160 | Stucco Band Trim | 2012-07-09 → 2012-07-24 (+15d) | 2012-08-17 → 2012-09-05 (+19d) |  |  | 325d → 332.36d |  |
| EC2220 | Paint Exterior | 2012-08-27 → 2012-09-12 (+16d) | 2012-11-16 → 2012-12-06 (+20d) |  |  | 325d → 332.36d |  |
| EC2230 | Install Railings | 2012-08-27 → 2012-09-12 (+16d) | 2012-10-26 → 2012-11-14 (+19d) |  |  | 370d → 377.36d |  |
| EC2300 | Demobilize Scaffolding | 2012-11-19 → 2012-12-06 (+17d) | 2012-12-07 → 2012-12-28 (+21d) |  |  | 325d → 332.36d |  |
| EC2320 | Shell Complete | 2012-12-07 → 2012-12-28 (+21d) | 2012-12-07 → 2012-12-28 (+21d) |  |  | 340d → 347.36d |  |
| 4 | **Interior Finishes** | 2012-02-08 → 2012-02-21 (+13d) | 2013-07-05 → 2013-07-31 (+26d) |  |  |  |  |
| EC2000 | Unit Finishes Building North - Floor 1 | 2012-02-08 → 2012-02-21 (+13d) | 2013-01-24 → 2013-02-15 (+22d) |  |  | 289d → 296.36d |  |
| EC2030 | Unit Finishes Building South - Floor 1 | 2012-02-15 → 2012-02-28 (+13d) | 2013-01-31 → 2013-02-22 (+22d) |  |  | 289d → 296.36d |  |
| EC2040 | Building 1 Elevators Complete | 2012-02-15 → 2012-02-28 (+13d) | 2012-06-14 → 2012-06-29 (+15d) |  |  | 423d → 430.36d |  |
| EC2070 | Unit Finishes Building North - Floor 2 | 2012-02-22 → 2012-03-06 (+13d) | 2013-01-30 → 2013-02-21 (+22d) |  |  | 289d → 296.36d |  |
| EC2120 | Unit Finishes Building South - Floor 2 | 2012-02-29 → 2012-03-13 (+13d) | 2013-02-06 → 2013-02-28 (+22d) |  |  | 289d → 296.36d |  |
| EC2150 | Unit Finishes Building North - Floor 3 | 2012-03-07 → 2012-03-20 (+13d) | 2013-02-13 → 2013-03-07 (+22d) |  |  | 289d → 296.36d |  |
| EC2170 | Unit Finishes Building South - Floor 3 | 2012-03-14 → 2012-03-27 (+13d) | 2013-02-20 → 2013-03-14 (+22d) | 246d → 276d |  | 289d → 296.36d |  |
| EC2200 | Unit Finishes Building North - Floor 4 | 2012-03-21 → 2012-04-03 (+13d) | 2013-02-22 → 2013-03-18 (+24d) | 243d → 273d |  | 289d → 296.36d |  |
| EC2210 | Unit Finishes Building South - Floor 4 | 2012-03-28 → 2012-04-10 (+13d) | 2013-03-01 → 2013-03-25 (+24d) |  |  | 289d → 296.36d |  |
| EC2410 | Final Inspections and Punchlist | 2013-03-04 → 2013-03-25 (+21d) | 2013-07-05 → 2013-07-31 (+26d) | 90d → 115d |  | 289d → 296.36d |  |
| 5 | **Courtyard** | 2012-12-10 → 2012-12-28 (+18d) | 2013-05-16 → 2013-06-10 (+25d) |  |  |  |  |
| EC2330 | Courtyard Walks and Amenities | 2012-12-10 → 2012-12-28 (+18d) | 2013-05-16 → 2013-06-10 (+25d) |  |  | 325d → 332.36d |  |
| 5 | **Garage 1** | 2011-06-08 → 2011-06-24 (+16d) | 2013-04-12 → 2013-04-26 (+14d) |  |  |  |  |
| EC1420 | Start Garage | 2011-06-08 → 2011-06-24 (+16d) | 2011-06-08 → 2011-06-24 (+16d) | 5d → 0d |  | 177d → 174.36d |  |
| EC1430 | Shop Drawings, Review & Approval | 2011-06-15 → 2011-06-24 (+9d) | 2011-10-18 → 2011-10-27 (+9d) |  |  | 167d → 174.36d |  |
| EC1810 | Fab & Delivery | 2011-10-19 → 2011-10-27 (+8d) | 2012-02-21 → 2012-03-06 (+14d) |  |  | 167d → 174.36d |  |
| EC2090 | Erect Precast Structure | 2012-02-22 → 2012-03-06 (+13d) | 2012-08-07 → 2012-08-23 (+16d) |  |  | 167d → 174.36d |  |
| EC2280 | Fire Protection and Lighting | 2012-08-08 → 2012-08-23 (+15d) | 2012-12-11 → 2013-01-02 (+22d) |  |  | 349d → 362.36d |  |
| EC2310 | Finishes, Barrier Cables & Striping | 2012-11-14 → 2012-12-03 (+19d) | 2013-03-19 → 2013-04-10 (+22d) |  |  | 349d → 362.36d |  |
| EC2380 | Punchlist Garage | 2013-03-20 → 2013-04-10 (+21d) | 2013-04-12 → 2013-04-26 (+14d) |  |  | 349d → 362.36d |  |
| EC2390 | Complete Garage 1 | 2013-04-12 → 2013-04-26 (+14d) | 2013-04-12 → 2013-04-26 (+14d) |  |  | 349d → 362.36d |  |
| EC2400 | Complete Garage | 2013-04-12 → 2013-04-26 (+14d) | 2013-04-12 → 2013-04-26 (+14d) |  |  | 349d → 362.36d |  |
| 6 | **Garage 2** |  | 2012-09-18 → 2012-09-26 (+8d) |  |  |  |  |
| EC1020 | Start Garage | 2010-09-01 A | 2010-09-01 A |  | 0% → 100% | 497d → none |  |
| EC1030 | Shop Drawings, Review and Approval | 2010-09-01 A | 2011-01-04 → 2011-01-12 A (+8d) |  | 0% → 100% | 497d → none |  |
| EC1180 | Fab & Delivery | 2011-01-05 → 2011-01-12 A (+7d) |  |  | 0% → 82% | 497d → 511.9d |  |
| EC1280 | Erect Precast Structure | 2011-05-11 → 2011-05-10 (-1d) | 2011-10-25 → 2011-10-28 (+3d) |  |  | 497d → 511.9d |  |
| EC1590 | Fire Protection and Lighting | 2011-10-26 → 2011-10-28 (+2d) | 2012-02-28 → 2012-03-02 (+3d) |  |  | 497d → 511.9d |  |
| EC1680 | Finishes and Striping | 2012-02-01 → 2012-02-03 (+2d) | 2012-06-26 → 2012-07-02 (+6d) | 105d → 108d |  | 497d → 511.9d |  |
| EC2060 | Punch List Garage | 2012-06-27 → 2012-07-02 (+5d) | 2012-09-18 → 2012-09-26 (+8d) | 60d → 69d |  | 497d → 511.9d |  |
| EC2180 | Complete Garage 2 | 2012-09-18 → 2012-09-26 (+8d) | 2012-09-18 → 2012-09-26 (+8d) |  |  | 497d → 511.9d |  |
| EC2190 | Complete Garage | 2012-09-18 → 2012-09-26 (+8d) | 2012-09-18 → 2012-09-26 (+8d) |  |  | 497d → 511.9d |  |
| 7 | **Roads, Utilities & Pavers** |  | 2013-04-25 → 2013-05-17 (+22d) |  |  |  |  |
| EC1000 | Curbing | 2010-09-01 A | 2011-01-04 → 2010-12-30 A (-5d) |  | 0% → 100% | 794d → none |  |
| EC1040 | Electric to Building 4 Power Vault | 2010-09-01 A | 2011-01-04 → 2011-01-10 A (+6d) |  | 0% → 100% | 942d → none |  |
| EC1050 | Electric to Building 3 Power Vault | 2010-09-01 A | 2010-12-30 A |  | 0% → 100% | 945d → none |  |
| EC1100 | Storm Drainage Site Work | 2010-09-01 A | 2011-01-04 → 2010-12-29 A (-6d) |  | 0% → 100% | 45d → none | Permits Received - Start Site Work → none |
| EC1110 | Site Electrical Work & Temp Power | 2010-09-01 A | 2010-09-21 A |  | 0% → 100% | 45d → none |  |
| EC1130 | Walkways | 2010-09-15 A | 2011-01-10 → 2011-02-04 A (+25d) |  | 0% → 100% | 794d → none |  |
| EC1200 | Roadway Pavers | 2011-01-11 A |  |  | 0% → 84% | 794d → 805.37d |  |
| EC1270 | Finish Paving, Striping and Signs | 2011-05-09 → 2011-05-06 (-3d) | 2011-07-29 → 2011-08-02 (+4d) |  |  | 794d → 805.37d |  |
| EC1440 | Electric to Building 2 Power Vault | 2011-09-01 → 2011-09-21 (+20d) | 2012-02-07 → 2012-03-02 (+24d) |  |  |  |  |
| EC1750 | Electric to Building 1 Power Vault | 2011-10-17 → 2011-10-25 (+8d) | 2012-02-14 → 2012-02-28 (+14d) |  |  | 495d → 502.36d |  |
| EC1610 | Curbs & Paving | 2011-10-26 → 2011-10-28 (+2d) | 2012-02-02 → 2012-02-10 (+8d) |  |  | 660d → 671.9d |  |

| ID | Task | Start | Finish | Complete | Total float |
| --- | --- | --- | --- | --- | --- |
| EC2250 | Fountain/Water Feature | 2012-08-02 → 2012-08-17 (+15d) | 2013-02-19 → 2013-03-13 (+22d) |  | 387d → 394.36d |
| EC2260 | Entry Feature/Sign Wall | 2012-08-08 → 2012-08-23 (+15d) | 2013-02-04 → 2013-02-26 (+22d) |  | 398d → 405.36d |
| EC2290 | Curbs & Paving | 2012-08-08 → 2012-08-23 (+15d) | 2012-12-11 → 2013-01-02 (+22d) |  | 422d → 429.36d |
| EC2340 | Curbs & Paving | 2012-12-10 → 2012-12-28 (+18d) | 2013-04-25 → 2013-05-17 (+22d) |  | 340d → 347.36d |
| 8 | **Landscape & Irrigation** | 2011-04-13 → 2011-04-08 (-5d) | 2014-08-14 → 2014-09-24 (+41d) |  |  |
| EC1600 | Site Cleanup | 2011-04-13 → 2011-04-08 A (-5d) | 2011-07-05 → 2011-07-01 (-4d) | 0% → 20% | 812d → 826.33d |
| EC2360 | Landscape & Irrigation | 2013-03-29 → 2013-05-01 (+33d) | 2014-08-14 → 2014-09-24 (+41d) |  |  |
